# 冷库监管系统项目

Schedule from MS Project XML, 2021-05-05 to 2021-05-27, status date 2022-05-30, A marks actual dates.

## Calendars

- Calendar 霍曙光: Mon-Sat 09:00-12:00, 13:00-18:00; Sun off.

## Resources

| Resource | Group |
| --- | --- |
| 霍曙光 |  |
| 程艳娜 | UI设计 |
| 麻梓鑫 | UI设计 |
| 任美全 | 研发中心 |
| 杨静 | 前端人员 |
| 柴志勇 | iOS |
| 余朝阳 | iOS |
| 代雪峰 | android |
| 朱龙江 | android |
| 史中华 | 后台 |
| 李萌萌 | 测试 |
| 张宇航 | 测试 |

## Schedule

| ID | WBS | Task | Type | Start | Finish | Predecessors | Complete | Constraint | Resources |
| --- | --- | --- | --- | --- | --- | --- | --- | --- | --- |
| 2 | 1.1 | **评审** |  | 2021-05-05 A | 2021-05-05 A |  |  | must start on 2021-05-05 |  |
| 3 | 1.1.1 | 组织会议 [0/21] | manual | 2021-05-05 A | 2021-05-05 A |  | 100% | must start on 2021-05-05 | 任美全 |
| 4 | 1.1.2 | 需求评审 | manual | 2021-05-05 A | 2021-05-05 A | 3 | 100% | must start on 2021-05-05 | 任美全; 杨静; 柴志勇; 余朝阳; 代雪峰; 朱龙江; 史中华; 李萌萌; 张宇航; 程艳娜; 麻梓鑫 |
| 5 | 1.1.3 | 用例评审 | manual | 2021-05-05 A | 2021-05-05 A | 4 | 100% | must start on 2021-05-05 | 任美全; 杨静; 柴志勇; 余朝阳; 代雪峰; 朱龙江; 史中华; 李萌萌; 张宇航 |
| 6 | 1.1.4 | 设计评审 | manual | 2021-05-05 A | 2021-05-05 A | 5 | 100% | must start on 2021-05-05 | 杨静; 柴志勇; 余朝阳; 代雪峰; 朱龙江; 史中华 |
| 7 | 1.2 | **愿景宣言：心灵演练** |  | 2021-05-06 A | 2021-05-06 A | 2 |  | must start on 2021-05-06 |  |
| 8 | 1.2.1 | 心灵演练 | manual | 2021-05-06 A | 2021-05-06 A |  | 100% | must start on 2021-05-06 | 任美全 |
| 9 | 1.2.2 | 使命宣言 | manual | 2021-05-06 A | 2021-05-06 A |  | 100% | must start on 2021-05-06 | 任美全 |
| 10 | 1.3 | **里程碑：要事第一** |  | 2021-05-06 A | 2021-05-27 A | 7 |  | must start on 2021-05-06 |  |
| 11 | 1.3.1 | 启动会议 | manual | 2021-05-06 A | 2021-05-06 A |  | 100% | must start on 2021-05-06 | 任美全; 杨静; 柴志勇; 余朝阳; 代雪峰; 朱龙江; 史中华; 李萌萌; 张宇航 |
| 12 | 1.3.2 | 开发结束 | milestone, manual | 2021-05-14 A | 2021-05-14 A | 11, 15 |  | must start on 2021-05-14 |  |
| 13 | 1.3.3 | 提测发布 | milestone, manual | 2021-05-27 A | 2021-05-27 A | 12, 35 |  | must start on 2021-05-27 |  |
| 14 | 1.3.4 | 项目回顾 | milestone, manual | 2021-05-27 A | 2021-05-27 A | 13, 38 |  | must start on 2021-05-27 |  |
| 15 | 1.4 | **智慧通知** |  | 2021-05-06 A | 2021-05-14 A | 11 |  | must start on 2021-05-06 |  |
| 16 | 1.4.1 | 开发设计 | manual | 2021-05-06 A | 2021-05-06 A |  | 100% | must start on 2021-05-06 | 柴志勇; 余朝阳 |
| 17 | 1.4.2 | 技术调研 | manual | 2021-05-06 A | 2021-05-06 A | 16 | 100% | must start on 2021-05-06 | 杨静; 柴志勇; 余朝阳; 代雪峰; 朱龙江; 史中华 |
| 18 | 1.4.3 | 新建通知 [6/6] | manual | 2021-05-06 A | 2021-05-07 A | 17 | 100% | must start on 2021-05-06 | 柴志勇; 余朝阳 |
| 19 | 1.4.4 | **通知人员管理 [3/3]** |  | 2021-05-07 A | 2021-05-11 A | 18 |  | must start on 2021-05-07 |  |
| 20 | 1.4.4.1 | 门店列表(支持分页) | manual | 2021-05-07 A | 2021-05-08 A |  | 100% | must start on 2021-05-07 | 柴志勇; 余朝阳 |
| 21 | 1.4.4.2 | 人员列表(支持分页) | manual | 2021-05-08 A | 2021-05-10 A |  | 100% | must start on 2021-05-08 | 柴志勇; 余朝阳 |
| 22 | 1.4.4.3 | 筛选条件 | manual | 2021-05-10 A | 2021-05-11 A |  | 100% | must start on 2021-05-10 | 柴志勇; 余朝阳 |
| 23 | 1.4.5 | **通知详情 [3/3]** |  | 2021-05-11 A | 2021-05-14 A | 19 |  | must start on 2021-05-11 |  |
| 24 | 1.4.5.1 | 通知列表 | manual | 2021-05-13 A | 2021-05-14 A |  | 100% | must start on 2021-05-13 | 柴志勇; 余朝阳 |
| 25 | 1.4.5.2 | 通知详情 [4/4] | manual | 2021-05-11 A | 2021-05-12 A |  | 100% | must start on 2021-05-11 | 柴志勇; 余朝阳 |
| 26 | 1.4.5.3 | 历史搜索页(UI) | manual | 2021-05-12 A | 2021-05-13 A |  | 100% | must start on 2021-05-12 | 柴志勇; 余朝阳 |

| ID | WBS | Task | Type | Start | Finish | Predecessors | Complete | Constraint | Resources |
| --- | --- | --- | --- | --- | --- | --- | --- | --- | --- |
| 27 | 1.5 | **视频回放** |  | 2021-05-14 A | 2021-05-19 A | 15 |  | must start on 2021-05-14 |  |
| 28 | 1.5.1 | 开发设计 | manual | 2021-05-14 A | 2021-05-14 A |  | 100% | must start on 2021-05-14 | 柴志勇; 余朝阳 |
| 29 | 1.5.2 | 技术调研 | manual | 2021-05-14 A | 2021-05-14 A | 28 | 100% | must start on 2021-05-14 | 杨静; 柴志勇; 余朝阳; 代雪峰; 朱龙江; 史中华 |
| 30 | 1.5.3 | 模块1 | manual | 2021-05-14 A | 2021-05-19 A | 29 | 100% | must start on 2021-05-14 | 柴志勇; 余朝阳 |
| 31 | 1.6 | **考试培训** |  | 2021-05-19 A | 2021-05-24 A | 27 |  | must start on 2021-05-19 |  |
| 32 | 1.6.1 | 开发设计 | manual | 2021-05-19 A | 2021-05-19 A |  | 100% | must start on 2021-05-19 | 柴志勇; 余朝阳 |
| 33 | 1.6.2 | 技术调研 | manual | 2021-05-19 A | 2021-05-19 A | 32 | 100% | must start on 2021-05-19 | 杨静; 柴志勇; 余朝阳; 代雪峰; 朱龙江; 史中华 |
| 34 | 1.6.3 | 模块1 | manual | 2021-05-19 A | 2021-05-24 A | 33 | 100% | must start on 2021-05-19 | 柴志勇; 余朝阳 |
| 35 | 1.7 | **提测发布** |  | 2021-05-24 A | 2021-05-27 A | 31 |  | must start on 2021-05-24 |  |
| 36 | 1.7.1 | 提测测试 | manual | 2021-05-24 A | 2021-05-26 A |  | 100% | must start on 2021-05-24 | 柴志勇; 余朝阳 |
| 37 | 1.7.2 | 发布 | manual | 2021-05-26 A | 2021-05-27 A | 36 | 100% | must start on 2021-05-26 | 柴志勇; 余朝阳 |
| 38 | 1.8 | 项目回顾 | manual | 2021-05-27 A | 2021-05-27 A | 35 | 100% | must start on 2021-05-27 | 杨静; 柴志勇; 余朝阳; 代雪峰; 朱龙江; 史中华 |
